# Hörsaal Sanierung

Schedule from Primavera P6, 2026-11-09 to 2026-11-26, data date 2026-11-09.

## Schedule

| ID | WBS | Activity | Duration | Start | Finish | Predecessors | GAEB_OZ |
| --- | --- | --- | --- | --- | --- | --- | --- |
|  | 1 | **Vorbereitung** |  | 2026-11-09 | 2026-11-11 |  |  |
|  | 1 | **Baustelle** |  | 2026-11-09 | 2026-11-09 |  |  |
| A1010 |  | Baustelleneinrichtung | 1d | 2026-11-09 | 2026-11-09 |  | 01.01.0010 |
|  | 2 | **Rückbau** |  | 2026-11-10 | 2026-11-11 |  |  |
| A1020 |  | Rückbau Bestuhlung | 2d | 2026-11-10 | 2026-11-11 | A1010 | 01.01.0020 |
|  | 2 | **Ausbau** |  | 2026-11-12 | 2026-11-26 |  |  |
|  | 1 | **Boden** |  | 2026-11-12 | 2026-11-17 |  |  |
| A1030 |  | Bodenbelag | 4d | 2026-11-12 | 2026-11-17 | A1020 | 01.02.0010;01.02.0020 |
|  | 2 | **Akustik** |  | 2026-11-12 | 2026-11-18 |  |  |
| A1040 |  | Akustikpaneele und Decke | 5d | 2026-11-12 | 2026-11-18 | A1020 | 01.03.0010;01.03.0020 |
|  | 3 | **Bühne** |  | 2026-11-16 | 2026-11-20 |  |  |
| A1065 |  | Bühne | 5d | 2026-11-16 | 2026-11-20 | A1020 | 01.05.0010;01.05.0020 |
|  | 4 | **Maler** |  | 2026-11-19 | 2026-11-23 |  |  |
| A1070 |  | Malerarbeiten | 3d | 2026-11-19 | 2026-11-23 | A1040 | 01.04.0010 |
|  | 5 | **Bestuhlung** |  | 2026-11-23 | 2026-11-26 |  |  |
| A1080 |  | Bestuhlung neu | 4d | 2026-11-23 | 2026-11-26 | A1030, A1070 | 01.06.0010 |
|  | 3 | **Technik (TGA/AV)** |  | 2026-11-16 | 2026-11-24 |  |  |
|  | 1 | **Elektro** |  | 2026-11-16 | 2026-11-20 |  |  |
| A1050 |  | Elektro und Licht-Traverse | 5d | 2026-11-16 | 2026-11-20 | A1020 | 02.01.0010;02.01.0020;02.01.0030 |
|  | 2 | **AV** |  | 2026-11-19 | 2026-11-24 |  |  |
| A1060 |  | AV-Technik | 4d | 2026-11-19 | 2026-11-24 | A1050 | 03.01.0010;03.01.0020 |
|  | 4 | **Abschluss** |  | 2026-11-26 | 2026-11-26 |  |  |
|  | 1 | **Abnahme** |  | 2026-11-26 | 2026-11-26 |  |  |
| A1090 |  | Abnahme | 1d | 2026-11-26 | 2026-11-26 | A1060, A1065, A1080 |  |

Notes:
- A1020: ELEMENT_IDS: E-ROW-A;E-ROW-B;E-ROW-C;E-ROW-D;E-ROW-E;E-ROW-F;E-ROW-G;E-ROW-H
- A1030: ELEMENT_IDS: E-FLOOR-AUD;E-FLOOR-STAGE
- A1040: ELEMENT_IDS: E-CEILING;E-PANELS-E;E-PANELS-W
- A1065: ELEMENT_IDS: E-CURTAIN;E-LECTERN;E-STAGE;E-STAGE-STAIRS
- A1070: ELEMENT_IDS: E-WALL-E;E-WALL-N;E-WALL-S;E-WALL-W
- A1080: ELEMENT_IDS: E-ROW-A;E-ROW-B;E-ROW-C;E-ROW-D;E-ROW-E;E-ROW-F;E-ROW-G;E-ROW-H
- A1050: ELEMENT_IDS: E-CABLETRAY;E-EMLIGHT;E-TRUSS-1;E-TRUSS-2
- A1060: ELEMENT_IDS: E-MIXER;E-PROJECTOR;E-SCREEN;E-SPK-L;E-SPK-R
